How a schedule from an exported table changed from version to version. A marks actual dates.

## Version 1 (saved 2026-02-28)

Note of the change: Refactor: Organizar documentación del proyecto en nuevas carpetas y actualizar enlaces

| ID | Task | Start | Finish |
| --- | --- | --- | --- |
| 1 | Electronic Health Record (EHR) System | 2026-01-20 | 2026-04-10 |
| 2 | Fase 1: Análisis | 2026-01-20 | 2026-02-10 |
| 3 | Acta de constitución y kick-off del proyecto | 2026-01-20 | 2026-01-22 |
| 4 | Requisitos funcionales | 2026-01-23 | 2026-01-29 |
| 5 | Requisitos no funcionales | 2026-01-27 | 2026-01-29 |
| 6 | Análisis de riesgos y amenazas | 2026-01-30 | 2026-02-04 |
| 7 | Casos de uso e historias de usuario | 2026-01-30 | 2026-02-04 |
| 8 | Reglas de negocio y diagrama de flujo de atención | 2026-02-03 | 2026-02-06 |
| 9 | Revisión con Stakeholders/Profesores - Fase Análisis | 2026-02-05 | 2026-02-07 |
| 10 | Entrega Fase Análisis (documentos y aceptación) | 2026-02-08 | 2026-02-10 |
| 11 | Fase 2: Diseño | 2026-02-11 | 2026-02-28 |
| 12 | Documentación API REST (OpenAPI 3.0) | 2026-02-11 | 2026-02-17 |
| 13 | Diagrama ER y esquema de base de datos | 2026-02-12 | 2026-02-17 |
| 14 | Arquitectura del sistema (diseño detallado) | 2026-02-18 | 2026-02-20 |
| 15 | Wireframes pantallas principales | 2026-02-18 | 2026-02-24 |
| 16 | Wireframes pantallas restantes | 2026-02-25 | 2026-02-28 |
| 17 | Mockups de alta fidelidad | 2026-02-21 | 2026-02-26 |
| 18 | Design system y guía de estilos | 2026-02-19 | 2026-02-24 |
| 19 | Documento Esquema Web Services y Autenticación | 2026-02-17 | 2026-02-18 |
| 20 | Plan de Trabajo (MS Project) y estimación | 2026-02-24 | 2026-02-25 |
| 21 | Revisión con Stakeholders/Profesores - Fase Diseño | 2026-02-26 | 2026-02-27 |
| 22 | Entrega Fase Diseño (documentos y aprobación) | 2026-02-28 | 2026-02-28 |
| 23 | Fase 3: Desarrollo | 2026-03-02 | 2026-03-28 |
| 24 | Setup backend (Express TypeScript Prisma PostgreSQL) | 2026-03-02 | 2026-03-06 |
| 25 | Autenticación JWT y autorización RBAC | 2026-03-05 | 2026-03-10 |
| 26 | Endpoints módulo pacientes y usuarios | 2026-03-09 | 2026-03-13 |
| 27 | Endpoints módulo citas | 2026-03-12 | 2026-03-16 |
| 28 | Endpoints expedientes médicos | 2026-03-13 | 2026-03-18 |
| 29 | Revisión con Stakeholders/Profesores - MVP (Prototipo funcional) | 2026-03-14 | 2026-03-14 |
| 30 | Endpoints medicamentos procedimientos enfermería | 2026-03-17 | 2026-03-20 |
| 31 | Endpoints terapia sesiones psicometría interconsultas | 2026-03-19 | 2026-03-24 |
| 32 | Endpoints reportes auditoría notificaciones | 2026-03-23 | 2026-03-26 |
| 33 | Tests unitarios e integración backend | 2026-03-25 | 2026-03-30 |
| 34 | Setup frontend (React Vite Tailwind) y estructura | 2026-03-09 | 2026-03-11 |
| 35 | Componentes de autenticación y layout (UI) | 2026-03-12 | 2026-03-17 |
| 36 | Módulo pacientes y usuarios (UI) | 2026-03-16 | 2026-03-20 |
| 37 | Módulo citas y expedientes médicos (UI) | 2026-03-19 | 2026-03-25 |
| 38 | Módulos medicamentos terapia reportes (UI) | 2026-03-24 | 2026-03-30 |
| 39 | Integración Electron y empaquetado | 2026-03-27 | 2026-03-31 |
| 40 | Tests E2E frontend | 2026-03-30 | 2026-04-02 |
| 41 | Revisión con Stakeholders/Profesores - Desarrollo completo | 2026-03-28 | 2026-03-28 |
| 42 | Fase 4: Testing y QA | 2026-03-30 | 2026-04-03 |
| 43 | Pruebas de rendimiento y carga | 2026-03-31 | 2026-04-02 |
| 44 | Auditoría de seguridad (revisión OWASP) | 2026-03-31 | 2026-04-01 |
| 45 | Pruebas de usabilidad con usuarios | 2026-04-01 | 2026-04-02 |
| 46 | Corrección de bugs críticos y optimización | 2026-04-02 | 2026-04-04 |
| 47 | Revisión con Stakeholders/Profesores - QA y aceptación | 2026-04-03 | 2026-04-03 |
| 48 | Fase 5: Despliegue y Cierre | 2026-04-04 | 2026-04-10 |
| 49 | Configuración de ambiente de producción | 2026-04-04 | 2026-04-05 |
| 50 | Documentación de usuario y manual de administración | 2026-04-04 | 2026-04-07 |
| 51 | Capacitación a usuarios (Dept. Psicología y Enfermería) | 2026-04-06 | 2026-04-07 |
| 52 | Transferencia de conocimiento y cierre administrativo | 2026-04-08 | 2026-04-09 |
| 53 | Entrega final del proyecto (10 Abril 2026) | 2026-04-10 | 2026-04-10 |

## Version 2 (saved 2026-03-28)

Note of the change: feat: Enhance project management files and add evaluation checklist

Last finish stays 2026-04-10.

Added:

| ID | Task | Start | Finish |
| --- | --- | --- | --- |
| 4 | Matriz RACI (roles y responsabilidades) | 2026-01-23 | 2026-01-24 |

Changed:

| ID | Task | Start | Finish |
| --- | --- | --- | --- |
| 5 | Requisitos funcionales | 2026-01-23 → 2026-01-27 (+4d) | 2026-01-29 → 2026-02-02 (+4d) |
| 7 | Análisis de riesgos y amenazas | 2026-01-30 → 2026-02-03 (+4d) | 2026-02-04 → 2026-02-05 (+1d) |
| 8 | Casos de uso e historias de usuario | 2026-01-30 → 2026-02-03 (+4d) | 2026-02-04 → 2026-02-05 (+1d) |
| 9 | Reglas de negocio y diagrama de flujo de atención | 2026-02-03 → 2026-02-06 (+3d) | 2026-02-06 → 2026-02-10 (+4d) |
| 10 | Revisión con Stakeholders/Profesores - Fase Análisis | 2026-02-05 → 2026-02-10 (+5d) | 2026-02-07 → 2026-02-10 (+3d) |
| 11 | Entrega Fase Análisis (documentos y aceptación) | 2026-02-08 → 2026-02-10 (+2d) |  |
| 14 | Diagrama ER y esquema de base de datos | 2026-02-12 → 2026-02-11 (-1d) | 2026-02-17 → 2026-02-16 (-1d) |
| 16 | Wireframes pantallas principales | 2026-02-18 → 2026-02-11 (-7d) | 2026-02-24 → 2026-02-17 (-7d) |
| 17 | Wireframes pantallas restantes | 2026-02-25 → 2026-02-18 (-7d) | 2026-02-28 → 2026-02-23 (-5d) |
| 18 | Mockups de alta fidelidad | 2026-02-21 → 2026-02-18 (-3d) | 2026-02-26 → 2026-02-23 (-3d) |
| 20 | Documento Esquema Web Services y Autenticación | 2026-02-17 → 2026-02-18 (+1d) | 2026-02-18 → 2026-02-19 (+1d) |
| 24 | Fase 3: Desarrollo |  | 2026-03-28 → 2026-04-02 (+5d) |
| 25 | Setup backend (Express TypeScript Prisma PostgreSQL) |  | 2026-03-06 → 2026-03-04 (-2d) |
| 26 | Autenticación JWT y autorización RBAC |  | 2026-03-10 → 2026-03-09 (-1d) |
| 27 | Endpoints módulo pacientes y usuarios | 2026-03-09 → 2026-03-10 (+1d) |  |
| 28 | Endpoints módulo citas | 2026-03-12 → 2026-03-16 (+4d) | 2026-03-16 → 2026-03-18 (+2d) |
| 29 | Endpoints expedientes médicos | 2026-03-13 → 2026-03-16 (+3d) |  |
| 30 | Revisión con Stakeholders/Profesores - MVP (Prototipo funcional) | 2026-03-14 → 2026-03-19 (+5d) | 2026-03-14 → 2026-03-19 (+5d) |
| 31 | Endpoints medicamentos procedimientos enfermería | 2026-03-17 → 2026-03-20 (+3d) | 2026-03-20 → 2026-03-25 (+5d) |
| 32 | Endpoints terapia sesiones psicometría interconsultas | 2026-03-19 → 2026-03-20 (+1d) | 2026-03-24 → 2026-03-25 (+1d) |
| 33 | Endpoints reportes auditoría notificaciones | 2026-03-23 → 2026-03-26 (+3d) | 2026-03-26 → 2026-03-30 (+4d) |
| 34 | Tests unitarios e integración backend | 2026-03-25 → 2026-03-31 (+6d) | 2026-03-30 → 2026-04-02 (+3d) |
| 35 | Setup frontend (React Vite Tailwind) y estructura | 2026-03-09 → 2026-03-02 (-7d) | 2026-03-11 → 2026-03-04 (-7d) |
| 36 | Componentes de autenticación y layout (UI) | 2026-03-12 → 2026-03-05 (-7d) | 2026-03-17 → 2026-03-10 (-7d) |
| 37 | Módulo pacientes y usuarios (UI) | 2026-03-16 → 2026-03-11 (-5d) | 2026-03-20 → 2026-03-16 (-4d) |
| 38 | Módulo citas y expedientes médicos (UI) | 2026-03-19 → 2026-03-17 (-2d) | 2026-03-25 → 2026-03-20 (-5d) |
| 39 | Módulos medicamentos terapia reportes (UI) | 2026-03-24 → 2026-03-17 (-7d) | 2026-03-30 → 2026-03-20 (-10d) |
| 40 | Integración Electron y empaquetado | 2026-03-27 → 2026-03-23 (-4d) | 2026-03-31 → 2026-03-25 (-6d) |
| 41 | Tests E2E frontend | 2026-03-30 → 2026-03-26 (-4d) | 2026-04-02 → 2026-03-27 (-6d) |
| 42 | Revisión con Stakeholders/Profesores - Desarrollo completo | 2026-03-28 → 2026-04-03 (+6d) | 2026-03-28 → 2026-04-03 (+6d) |
| 43 | Fase 4: Testing y QA | 2026-03-30 → 2026-04-04 (+5d) | 2026-04-03 → 2026-04-08 (+5d) |
| 44 | Pruebas de rendimiento y carga | 2026-03-31 → 2026-04-04 (+4d) | 2026-04-02 → 2026-04-05 (+3d) |
| 45 | Auditoría de seguridad (revisión OWASP) | 2026-03-31 → 2026-04-04 (+4d) | 2026-04-01 → 2026-04-05 (+4d) |
| 46 | Pruebas de usabilidad con usuarios | 2026-04-01 → 2026-04-06 (+5d) | 2026-04-02 → 2026-04-07 (+5d) |
| 47 | Corrección de bugs críticos y optimización | 2026-04-02 → 2026-04-07 (+5d) | 2026-04-04 → 2026-04-08 (+4d) |
| 48 | Revisión con Stakeholders/Profesores - QA y aceptación | 2026-04-03 → 2026-04-08 (+5d) | 2026-04-03 → 2026-04-08 (+5d) |
| 49 | Fase 5: Despliegue y Cierre | 2026-04-04 → 2026-04-09 (+5d) |  |
| 50 | Configuración de ambiente de producción | 2026-04-04 → 2026-04-09 (+5d) | 2026-04-05 → 2026-04-09 (+4d) |
| 51 | Documentación de usuario y manual de administración | 2026-04-04 → 2026-04-09 (+5d) | 2026-04-07 → 2026-04-10 (+3d) |
| 52 | Capacitación a usuarios (Dept. Psicología y Enfermería) | 2026-04-06 → 2026-04-10 (+4d) | 2026-04-07 → 2026-04-10 (+3d) |
| 53 | Transferencia de conocimiento y cierre administrativo | 2026-04-08 → 2026-04-10 (+2d) | 2026-04-09 → 2026-04-10 (+1d) |
